# 初稿0.0.1

Schedule from MS Project, 2018-09-18 to 2019-01-13, A marks actual dates.

## Calendars

- 标准: Mon-Fri 08:00-12:00, 13:00-17:00; Sat-Sun off.

## Schedule

| ID | Task | Type | Duration | Start | Finish | Remaining |
| --- | --- | --- | --- | --- | --- | --- |
| 1 | 项目准备 | manual | 9d | 2018-09-19 | 2018-10-01 |  |
| 2 | 小组第一周例会 | manual | 1d | 2018-09-18 | 2018-09-18 |  |
| 3 | 人员召集 | manual | 1d | 2018-09-18 | 2018-09-18 |  |
| 4 | 项目准备会议 | manual | 1d | 2018-09-18 | 2018-09-18 |  |
| 5 | 课题选定 | manual | 1d | 2018-09-18 | 2018-09-18 |  |
| 6 | 资源申请与完善 | manual | 1d | 2018-09-18 | 2018-09-18 |  |
| 7 | 软硬件环境落实 | manual | 1d | 2018-09-18 | 2018-09-18 |  |
| 8 | 项目起订 | manual | 1d | 2018-09-18 | 2018-09-18 |  |
| 9 | 小组第二周例会 | manual | 1d | 2018-09-29 | 2018-09-29 |  |
| 10 | 软件需求工程项目计划 | manual | 7d | 2018-09-21 | 2018-09-30 |  |
| 11 | 项目可行性报告 | manual | 7d | 2018-09-28 A | 2018-10-07 | 7d |
| 12 | 小组第四周例会 | manual | 1d | 2018-10-09 | 2018-10-09 |  |
| 13 | UML概述翻转PPT | manual | 7d | 2018-10-05 | 2018-10-14 |  |
| 14 | 项目章程 | manual | 7d | 2018-10-05 | 2018-10-14 |  |
| 15 | 项目总体性计划 | manual | 7d | 2018-10-05 | 2018-10-14 |  |
| 16 | 软件工程计划-初步 | manual | 7d | 2018-10-05 | 2018-10-14 |  |
| 17 | 小组第五周例会 | manual | 7d | 2018-10-08 | 2018-10-16 |  |
| 18 | Rational Rose反转课堂 | manual | 7d | 2018-10-12 | 2018-10-21 |  |
| 19 | QA计划 | manual | 7d | 2018-10-12 | 2018-10-21 |  |
| 20 | 小组第六周例会 | manual | 1d | 2018-10-23 | 2018-10-23 |  |
| 21 | 软件工程计划修改以及评审 | manual | 6d | 2018-10-21 | 2018-10-26 |  |
| 22 | 软件工程需求规格说明书 | manual | 7d | 2018-10-17 | 2018-10-25 |  |
| 23 | UML基础I 翻转课堂 | manual | 7d | 2018-10-19 | 2018-10-28 |  |
| 24 | 软件需求规格说明书修改及评审 | manual | 7d | 2018-10-25 | 2018-11-02 |  |
| 25 | 小组第七周例会 | manual | 1d | 2018-10-30 | 2018-10-30 |  |
| 26 | UML II翻转课堂 | manual | 7d | 2018-10-26 | 2018-11-04 |  |
| 27 | 小组第八周例会 | manual | 1d | 2018-11-06 | 2018-11-06 |  |
| 28 | 小组第九周例会 | manual | 1d | 2018-11-13 | 2018-11-13 |  |
| 29 | 小组第十周例会 | manual | 1d | 2018-11-20 | 2018-11-20 |  |
| 30 | 小组第十一周例会 | manual | 1d | 2018-11-27 | 2018-11-27 |  |
| 31 | SRS需求规格说明 | manual | 7d | 2018-11-23 | 2018-12-02 |  |
| 32 | 小组第十二周例会 | manual | 1d | 2018-12-04 | 2018-12-04 |  |
| 33 | UML 基础III翻转课堂 | manual | 7d | 2018-11-30 | 2018-12-09 |  |
| 34 | 软件需求变更文档 | manual | 7d | 2018-11-30 | 2018-12-09 |  |
| 35 | 小组第十三周例会 | manual | 1d | 2018-12-11 | 2018-12-11 |  |
| 36 | UML基础IIII 翻转课堂 | manual | 7d | 2018-12-07 | 2018-12-16 |  |
| 37 | 软件需求变更文档修改和评审 | manual | 7d | 2018-12-07 | 2018-12-16 |  |
| 38 | 小组第十四周例会 | manual | 1d | 2018-12-18 | 2018-12-18 |  |
| 39 | 软件需求变更文档 | manual | 7d | 2018-12-14 | 2018-12-23 |  |
| 40 | 系统设计与实现计划 | manual | 7d | 2018-12-14 | 2018-12-23 |  |
| 41 | 小组第十五周例会 | manual | 1d | 2018-12-25 | 2018-12-25 |  |
| 42 | 文档改进 | manual | 7d | 2018-12-21 | 2018-12-30 |  |
| 43 | 小组第十六周例会 | manual | 1d | 2019-01-08 | 2019-01-08 |  |
| 44 | 软件概要说明设计 | manual | 7d | 2018-12-28 | 2019-01-06 |  |
| 45 | 测试计划 | manual | 7d | 2018-12-28 | 2019-01-06 |  |
| 46 | 安装部署计划 | manual | 7d | 2018-12-28 | 2019-01-06 |  |
| 47 | 培训计划 | manual | 7d | 2018-12-28 | 2019-01-06 |  |
| 48 | 系统维护计划 | manual | 7d | 2018-12-28 | 2019-01-06 |  |
| 49 | 小组第十七周例会 | manual | 1d | 2019-01-08 | 2019-01-08 |  |
| 50 | 项目总结报告 | manual | 7d | 2019-01-04 | 2019-01-13 |  |
